# 船厂智能监控项目

Schedule from a web Gantt chart, 2026-05-20 to 2026-10-02.
Saturdays and Sundays are off

## Schedule

| ID | WBS | Task | Duration | Start | Finish | Predecessors | inPeople | Status |
| --- | --- | --- | --- | --- | --- | --- | --- | --- |
| 2 | 1 | 系统总体设计方案编写 | 2d | 2026-05-20 | 2026-05-21 |  | 陈建炜 |  |
| 3 | 2 | 系统总体设计方案评审 | 1d | 2026-05-22 | 2026-05-22 |  | 陈建炜、贺文飞 | waiting |
| 4 | 3 | 测试环境硬件准备（摄像头采购至少2台及安装、GPU服务器准备） | 6d | 2026-05-25 | 2026-06-01 |  | 刘欢、张春林 | waiting |
| 5 | 4 | 测试环境基础环境搭建（关系型数据库、向量数据库、对象存储、缓存数据库搭建、消息队列） | 2d | 2026-05-25 | 2026-05-26 |  | 刘栋 | waiting |
| 6 | 5 | 后端系统框架以及表结构创建 | 1d | 2026-05-27 | 2026-05-27 |  | 刘栋 | waiting |
| 7 | 6 | **桌面应用设计** | 13d | 2026-05-27 | 2026-06-12 |  | 张红娟 | waiting |
| 8 | 6.1 | 前端框架搭建、用户体系和权限控制功能开发 | 1d | 2026-05-27 | 2026-05-27 |  | 张红娟 | waiting |
| 9 | 6.2 | 设备管理页面开发 | 3d | 2026-05-28 | 2026-06-01 | 8 | 张红娟 | waiting |
| 10 | 6.3 | 事件告警页面开发 | 3d | 2026-06-02 | 2026-06-04 | 9 | 张红娟 | waiting |
| 11 | 6.4 | 配置管理页面开发 | 3d | 2026-06-05 | 2026-06-09 | 10 | 张红娟 | waiting |
| 12 | 6.5 | 记录管理页面开发 | 3d | 2026-06-10 | 2026-06-12 | 11 | 张红娟 | waiting |
| 13 | 7 | **后端功能详细设计** | 12d | 2026-05-27 | 2026-06-11 |  | 刘栋 | waiting |
| 14 | 7.1 | 用户体系和权限功能开发 | 1d | 2026-05-27 | 2026-05-27 |  | 刘栋 | waiting |
| 15 | 7.2 | 设备管理相关功能后端开发 | 3d | 2026-05-28 | 2026-06-01 | 14 | 刘栋 | waiting |
| 16 | 7.3 | 事件告警相关功能后端开发 | 3d | 2026-06-02 | 2026-06-04 | 15 | 刘栋 | waiting |
| 17 | 7.4 | 配置管理相关功能后端开发 | 3d | 2026-06-05 | 2026-06-09 | 16 | 刘栋 | waiting |
| 18 | 7.5 | 记录管理相关功能后端开发 | 2d | 2026-06-10 | 2026-06-11 | 17 | 刘栋 | waiting |
| 19 | 8 | **智能分析功能详细设计** | 39d | 2026-06-12 | 2026-08-05 |  | 陈建炜 | waiting |
| 20 | 8.1 | 视频流获取功能开发 | 1d | 2026-06-12 | 2026-06-12 |  | 陈建炜 | waiting |
| 21 | 8.2 | 人员物品检测跟踪以及身份识别功能开发 | 6d | 2026-06-15 | 2026-06-22 | 20 | 陈建炜 | waiting |
| 22 | 8.3 | 现场验证人员物品检测跟踪效果（包括目标检测算法标注和训练） | 6d | 2026-06-23 | 2026-06-30 | 21 | 陈建炜、张春林 | waiting |
| 23 | 8.4 | 人员进出监控与在岗状态功能开发 | 1d | 2026-07-01 | 2026-07-01 | 22 | 陈建炜 | waiting |
| 24 | 8.5 | 电子围栏与越界管理功能开发 | 1d | 2026-07-02 | 2026-07-02 | 23 | 陈建炜 | waiting |
| 25 | 8.6 | 班组点名与人员统计功能开发 | 1d | 2026-07-03 | 2026-07-03 | 24 | 陈建炜 | waiting |
| 26 | 8.7 | 集装箱进出与堆放监控功能开发 | 2d | 2026-07-06 | 2026-07-07 | 25 | 陈建炜 | waiting |
| 27 | 8.8 | 小物件流转追踪功能开发 | 2d | 2026-07-08 | 2026-07-09 | 26 | 陈建炜 | waiting |
| 28 | 8.9 | 垃圾桶分类考核功能开发 | 2d | 2026-07-10 | 2026-07-13 | 27 | 陈建炜 | waiting |
| 29 | 8.10 | 物品占位与通道管控功能开发 | 1d | 2026-07-14 | 2026-07-14 | 28 | 陈建炜 | waiting |
| 30 | 8.11 | 空间冲突预警功能开发 | 2d | 2026-07-15 | 2026-07-16 | 29 | 陈建炜 | waiting |
| 31 | 8.12 | 异常时段报警功能开发 | 1d | 2026-07-17 | 2026-07-17 | 30 | 陈建炜 | waiting |
| 32 | 8.13 | 安全事件识别功能开发 | 2d | 2026-07-20 | 2026-07-21 | 31 | 陈建炜 | waiting |
| 33 | 8.14 | 敏感物品和军人信息保护功能开发 | 1d | 2026-07-22 | 2026-07-22 | 32 | 陈建炜 | waiting |

Notes:
- 22: 要求现场至少安装2个监控，能获取监控视频和视频流，并拍摄到人和集装箱

| ID | WBS | Task | Duration | Start | Finish | Predecessors | inPeople | Status |
| --- | --- | --- | --- | --- | --- | --- | --- | --- |
| 34 | 8.15 | **效果优化及现场验证** | 10d | 2026-07-23 | 2026-08-05 | 33 | 陈建炜 | waiting |
| 35 | 8.15.1 | 目标检测算法数据标注 | 5d | 2026-07-23 | 2026-07-29 |  | 陈建炜、张春林 | waiting |
| 36 | 8.15.2 | 目标检测算法训练 | 5d | 2026-07-30 | 2026-08-05 | 35 | 陈建炜 | waiting |
| 37 | 8.15.3 | 垃圾分类视频标注 | 2d | 2026-07-30 | 2026-07-31 | 35 | 陈建炜、张春林 | waiting |
| 38 | 8.15.4 | 垃圾分类模型训练 | 3d | 2026-08-03 | 2026-08-05 | 37 | 陈建炜 | waiting |
| 39 | 9 | 系统集成测试 | 15d | 2026-08-06 | 2026-08-26 | 34 | 刘欢、张春林 | waiting |
| 40 | 10 | 系统性能测试 | 5d | 2026-08-06 | 2026-08-12 | 34 | 黄斌 | waiting |
| 41 | 11 | 测试问题修复 | 5d | 2026-08-27 | 2026-09-02 | 39 | 刘栋、张红娟、陈建炜 | waiting |
| 42 | 12 | 系统回归测试 | 4d | 2026-09-03 | 2026-09-08 | 41 | 刘欢、张春林、黄斌 | waiting |
| 43 | 13 | 部署手册验证 | 3d | 2026-09-09 | 2026-09-11 | 42 | 陈建炜、张春林 | waiting |
| 44 | 14 | 现场系统部署 | 5d | 2026-09-14 | 2026-09-18 | 43 | 陈建炜、张春林 | waiting |
| 45 | 15 | 系统试运行 | 10d | 2026-09-21 | 2026-10-02 | 44 | 陈建炜、张春林 | waiting |
| 46 | 16 | 系统优化 | 10d | 2026-09-21 | 2026-10-02 | 44 | 陈建炜、张春林 | waiting |

Notes:
- 35: 至少需要每一类1000个样本，类别包括普通人、军人、垃圾桶、集装箱、火灾、敏感物品（装备）
- 37: 至少需要每一类500个视频，类别包括扔垃圾、从垃圾桶旁边走过
